# Practicum ProjectWBSRev3

Schedule from MS Project, 2014-09-29 to 2014-12-11.

## Calendars

- Standard: Mon-Fri 08:00-12:00, 13:00-17:00; Sat-Sun off. Exceptions (off unless hours are given): 2014-10-04 08:00-12:00, 13:00-17:00, 2014-10-26 08:00-12:00, 13:00-17:00, 2014-11-01 08:00-12:00, 13:00-17:00, 2014-11-08 08:00-12:00, 13:00-17:00.

## Resources

| Resource |
| --- |
| Rob Newcomb |
| Dmitriy Leonchik |
| Mike Meza |
| Jose Aguliar |
| All Team Members |

## Schedule

| ID | WBS | Task | Type | Duration | Start | Finish | Predecessors | Total slack | Free slack | Constraint | Resources | Work |
| --- | --- | --- | --- | --- | --- | --- | --- | --- | --- | --- | --- | --- |
| 1 | 1 | **Idea Generating Phase** |  | 3d | 2014-09-29 | 2014-10-01 |  | 54d |  |  |  | 24h |
| 2 | 1.1 | Begin Practicum Project | milestone | 0d | 2014-09-29 | 2014-09-29 |  | 58d |  |  | All Team Members |  |
| 3 | 1.2 | Generate Practicum Project Ideas |  | 2d | 2014-09-29 | 2014-09-30 |  | 54d | 0d |  | All Team Members | 16h |
| 4 | 1.3 | Design Practicum Matrix |  | 1d | 2014-10-01 | 2014-10-01 | 3 | 54d | 0d |  | All Team Members | 8h |
| 5 | 2 | **Realization of Practicum Project** |  | 1d | 2014-10-01 | 2014-10-02 |  | 54d |  |  |  | 8h |
| 6 | 2.1 | Team Meeting | milestone | 0d | 2014-10-01 | 2014-10-01 | 7 | 54d | 0d | finish no earlier than 2014-10-01 | All Team Members |  |
| 7 | 2.2 | Decide Practicum Project | milestone | 0d | 2014-10-01 | 2014-10-01 |  | 54d | 0d | finish no earlier than 2014-10-01 | All Team Members |  |
| 8 | 2.3 | Compile needed items list |  | 1d | 2014-10-02 | 2014-10-02 | 6, 7, 4 | 54d |  | start no earlier than 2014-10-02 | All Team Members | 8h |
| 9 | 3 | **Research and Choosing Parts** |  | 6d | 2014-10-03 | 2014-10-09 |  | 23.5d |  |  |  | 64h |
| 10 | 3.1 | Team Meeting | milestone | 0d | 2014-10-06 | 2014-10-06 |  | 51d |  | finish no earlier than 2014-10-06 | All Team Members |  |
| 11 | 3.2 | Research GitHub |  | 1d | 2014-10-03 | 2014-10-03 |  | 52d | 1d | start no earlier than 2014-10-03 | Rob Newcomb | 8h |
| 12 | 3.3 | Implement GitHub |  | 1d | 2014-10-06 | 2014-10-06 | 11 | 51d |  | start no earlier than 2014-10-06 | Rob Newcomb | 8h |
| 13 | 3.4 | Reseach Arduino |  | 0.5d | 2014-10-03 | 2014-10-03 |  | 23.5d | 2.5d | start no earlier than 2014-10-03 | Dmitriy Leonchik; Mike Meza | 8h |
| 14 | 3.5 | Research EagleCad |  | 1d | 2014-10-04 | 2014-10-04 |  | 52d |  | start no earlier than 2014-10-04 | Mike Meza | 8h |
| 15 | 3.6 | Research Current Transformers (CT) |  | 1d | 2014-10-04 | 2014-10-04 |  | 50d | 1d | start no earlier than 2014-10-04 | Jose Aguliar; Rob Newcomb | 16h |
| 16 | 3.7 | Research Infrared (IR) sensors |  | 1d | 2014-10-04 | 2014-10-04 |  | 50d | 1d | start no earlier than 2014-10-04 | Dmitriy Leonchik | 8h |
| 17 | 3.8 | Team Meeting/Review Progress | milestone | 0d | 2014-10-09 | 2014-10-09 |  | 48d |  | finish no earlier than 2014-10-09 |  |  |
| 18 | 3.9 | Choose MicroController | milestone | 0d | 2014-10-07 | 2014-10-07 | 13 | 21d | 1d | start no earlier than 2014-10-07 | All Team Members |  |
| 19 | 3.10 | Choose IR Sensor | milestone | 0d | 2014-10-07 | 2014-10-07 | 16 | 49d | 1d | start no earlier than 2014-10-07 | All Team Members |  |
| 20 | 3.11 | Choose CT | milestone | 0d | 2014-10-07 | 2014-10-07 | 15 | 49d | 1d | start no earlier than 2014-10-07 | All Team Members |  |
| 21 | 3.12 | Determine parts needed for microcontroller circuit |  | 1d | 2014-10-08 | 2014-10-08 | 18, 20, 19 | 48d | 0d | start no earlier than 2014-10-08 | All Team Members | 8h |
| 22 | 4 | **Further Research and Understanding of Components** |  | 10d | 2014-10-09 | 2014-10-22 |  | 19d |  |  |  | 200h |
| 23 | 4.1 | Build first schematic of Thermal Monitoring System |  | 1d | 2014-10-09 | 2014-10-09 | 21 | 48d |  | start no earlier than 2014-10-09 | All Team Members | 8h |
| 24 | 4.2 | Create BOM |  | 1d | 2014-10-10 | 2014-10-10 |  | 46d | 0d | start no earlier than 2014-10-10 | Dmitriy Leonchik; Rob Newcomb | 16h |
| 25 | 4.3 | Order Parts |  | 1d | 2014-10-13 | 2014-10-13 | 24 | 46d |  | start no earlier than 2014-10-12 | Dmitriy Leonchik; Mike Meza | 16h |
| 26 | 4.4 | Team Meeting | milestone | 0d | 2014-10-14 | 2014-10-14 |  | 45d |  | finish no earlier than 2014-10-14 |  |  |
| 27 | 4.5 | Start Playing with Arduino Uno |  | 2d | 2014-10-14 | 2014-10-15 | 18 | 16d | 0d | start no earlier than 2014-10-14 | Mike Meza | 16h |
| 28 | 4.6 | Research RS485 for Fiber Optic Temp Sensor |  | 1d | 2014-10-14 | 2014-10-14 |  | 45d |  | start no earlier than 2014-10-14 | Dmitriy Leonchik; Rob Newcomb | 16h |
| 29 | 4.7 | Research Datasheet for CT |  | 1d | 2014-10-14 | 2014-10-14 |  | 45d |  | start no earlier than 2014-10-14 | Jose Aguliar | 8h |
| 30 | 4.8 | Research Code for Fiber Optic Sensor |  | 2d | 2014-10-16 | 2014-10-17 | 27 | 16d | 0d | start no earlier than 2014-10-16 | Rob Newcomb; Dmitriy Leonchik | 32h |
| 31 | 4.9 | Research code for CT |  | 2d | 2014-10-16 | 2014-10-17 | 27 | 16d | 0d | start no earlier than 2014-10-16 | Jose Aguliar | 16h |
| 32 | 4.10 | Team Meeting | milestone | 0d | 2014-10-16 | 2014-10-16 |  | 43d |  | finish no earlier than 2014-10-16 |  |  |
| 33 | 4.11 | Search for alternative to Fiber optic Temp Sensor |  | 1d | 2014-10-20 | 2014-10-20 |  | 16d | 2d | start no earlier than 2014-10-20 | Rob Newcomb | 8h |
| 34 | 4.12 | Determine Power Source for Microcontroller |  | 1d | 2014-10-20 | 2014-10-20 | 30, 31 | 16d | 2d | start no earlier than 2014-10-20 | Dmitriy Leonchik; Mike Meza | 16h |
| 35 | 4.13 | Team Meeting | milestone | 0d | 2014-10-21 | 2014-10-21 |  | 40d |  | finish no earlier than 2014-10-21 |  |  |
| 36 | 4.14 | Test Dragon Board for loading code onto Microcontroller |  | 2d | 2014-10-21 | 2014-10-22 |  | 30d | 3d | start no earlier than 2014-10-21 | Dmitriy Leonchik; Mike Meza; Rob Newcomb | 48h |

| ID | WBS | Task | Type | Duration | Start | Finish | Predecessors | Total slack | Free slack | Constraint | Resources | Work |
| --- | --- | --- | --- | --- | --- | --- | --- | --- | --- | --- | --- | --- |
| 37 | 5 | **PDS** |  | 4d | 2014-10-23 | 2014-10-27 |  | 35d |  |  |  | 40h |
| 38 | 5.1 | Team Meeting | milestone | 0d | 2014-10-23 | 2014-10-23 |  | 38d |  | finish no earlier than 2014-10-23 |  |  |
| 39 | 5.2 | Create PDS |  | 2d | 2014-10-23 | 2014-10-24 |  | 36d | 0d | start no earlier than 2014-10-23 | Rob Newcomb | 16h |
| 40 | 5.3 | Review PDS |  | 1d | 2014-10-26 | 2014-10-26 | 39 | 36d | 1d | start no earlier than 2014-10-26 | Jose Aguliar; Dmitriy Leonchik; Rob Newcomb | 24h |
| 41 | 5.4 | Submit PDS | milestone | 0d | 2014-10-27 | 2014-10-27 | 40 | 35d |  | finish no earlier than 2014-10-27 | All Team Members |  |
| 42 | 6 | **Designing EagleCad Schematic and Testing SR-51** |  | 7d | 2014-10-23 | 2014-10-30 |  | 14d |  |  |  | 96h |
| 43 | 6.1 | Build Schematic of Microcontroller for Submittal in EagleCad |  | 3d | 2014-10-23 | 2014-10-27 | 34, 33 | 14d | 0d | start no earlier than 2014-10-23 | Mike Meza | 24h |
| 44 | 6.2 | Build Prototype of system |  | 1d | 2014-10-27 | 2014-10-27 | 36 | 27d | 0d | start no earlier than 2014-10-27 | Dmitriy Leonchik | 8h |
| 45 | 6.3 | Team Meeting | milestone | 0d | 2014-10-28 | 2014-10-28 |  | 34d |  | finish no earlier than 2014-10-28 |  |  |
| 46 | 6.4 | Test IR Sensor with Prototype |  | 1d | 2014-10-28 | 2014-10-28 | 43, 44 | 32d | 0d | start no earlier than 2014-10-28 | Dmitriy Leonchik | 8h |
| 47 | 6.5 | Review EagleCad Schematic |  | 1d | 2014-10-28 | 2014-10-28 | 43 | 14d | 1d | start no earlier than 2014-10-28 | Mike Meza; Jose Aguliar; Rob Newcomb | 24h |
| 48 | 6.6 | Test CT with SR-51 High Amp Unit |  | 2d | 2014-10-29 | 2014-10-30 | 31 | 30d | 5d | start no earlier than 2014-10-29 | Rob Newcomb; Jose Aguliar | 32h |
| 49 | 6.7 | Submit EagleCad Schmatic in Class | milestone | 0d | 2014-10-29 | 2014-10-29 | 47 | 13d | 1d | finish no earlier than 2014-10-29 |  |  |
| 50 | 7 | **Interfacing Prototype for Temp Input and Display Output** |  | 2d | 2014-10-29 | 2014-10-30 |  | 26d |  |  |  | 32h |
| 51 | 7.1 | Interface IR Sensor with Microcontroller |  | 2d | 2014-10-29 | 2014-10-30 | 46 | 32d |  | start no earlier than 2014-10-29 | Dmitriy Leonchik | 16h |
| 52 | 7.2 | Interface LCD Sceen with Microcontroller |  | 2d | 2014-10-29 | 2014-10-30 | 44 | 26d | 3d | start no earlier than 2014-10-29 | Mike Meza | 16h |
| 53 | 8 | **Preliminary EagleCad Schematic Process** |  | 8d | 2014-10-30 | 2014-11-08 |  | 12d |  |  |  | 56h |
| 54 | 8.1 | Team Meeting | milestone | 0d | 2014-10-30 | 2014-10-30 |  | 32d |  | finish no earlier than 2014-10-30 |  |  |
| 55 | 8.2 | Build Preliminary EagleCad Schematic |  | 3d | 2014-10-31 | 2014-11-03 | 49 | 12d | 0d | start no earlier than 2014-10-31 | Mike Meza | 24h |
| 56 | 8.3 | Review EagleCad Schematic |  | 1d | 2014-11-04 | 2014-11-04 | 55 | 12d | 1d | start no earlier than 2014-11-04 | Jose Aguliar; Rob Newcomb; Mike Meza | 24h |
| 57 | 8.4 | Submit Preliminary EagleCad Schematic | milestone | 0d | 2014-11-05 | 2014-11-05 | 56 | 11d | 2d | finish no earlier than 2014-11-05 |  |  |
| 58 | 8.5 | Send EagleCad Schematic to OSH Park |  | 1d | 2014-11-08 | 2014-11-08 | 57 | 9d | 5d | start no earlier than 2014-11-08 | Mike Meza | 8h |
| 59 | 9 | **CT Testing and Interface** |  | 4d | 2014-11-04 | 2014-11-07 |  | 23d |  |  |  | 24h |
| 60 | 9.1 | Team Meeting | milestone | 0d | 2014-11-04 | 2014-11-04 |  | 28d |  | finish no earlier than 2014-11-04 |  |  |
| 61 | 9.2 | Test Microtroller to Receive 0-5V for CT |  | 1d | 2014-11-04 | 2014-11-04 | 52 | 23d | 5d | start no earlier than 2014-11-04 | Dmitriy Leonchik | 8h |
| 62 | 9.3 | Team Meeting | milestone | 0d | 2014-11-06 | 2014-11-06 |  | 26d |  | finish no earlier than 2014-11-06 |  |  |
| 63 | 9.4 | Test and Optimize CT for interface with Microcontroller |  | 2d | 2014-11-06 | 2014-11-07 | 48 | 25d |  | start no earlier than 2014-11-06 | Jose Aguliar | 16h |

| ID | WBS | Task | Type | Duration | Start | Finish | Predecessors | Total slack | Free slack | Constraint | Resources | Work |
| --- | --- | --- | --- | --- | --- | --- | --- | --- | --- | --- | --- | --- |
| 64 | 10 | **Purchasing smaller parts** |  | 1d | 2014-11-06 | 2014-11-06 |  | 26d |  |  |  | 8h |
| 65 | 10.1 | Purchase Caps and Resistors for Microcontroller |  | 1d | 2014-11-06 | 2014-11-06 |  | 26d |  | start no earlier than 2014-11-06 | Mike Meza | 8h |
| 66 | 11 | **WBS** |  | 4d | 2014-11-06 | 2014-11-10 |  | 23d |  |  |  | 64h |
| 67 | 11.1 | Create WBS |  | 2d | 2014-11-06 | 2014-11-07 |  | 23d | 0d | start no earlier than 2014-11-06 | Rob Newcomb | 16h |
| 68 | 11.2 | Review WBS |  | 2d | 2014-11-08 | 2014-11-10 | 67 | 23d | 0d | start no earlier than 2014-11-08 | Rob Newcomb; Jose Aguliar; Dmitriy Leonchik | 48h |
| 69 | 11.3 | Submit WBS | milestone | 0d | 2014-11-10 | 2014-11-10 | 68 | 23d |  | finish no earlier than 2014-11-10 | All Team Members |  |
| 70 | 12 | **Preliminary Testing** |  | 5d | 2014-11-11 | 2014-11-17 |  | 18d |  |  |  | 72h |
| 71 | 12.1 | Team Meeting | milestone | 0d | 2014-11-11 | 2014-11-11 |  | 22d |  | finish no earlier than 2014-11-11 | All Team Members |  |
| 72 | 12.2 | Interface CT, IR, and LCD Display with microcontroller Prototype |  | 1d | 2014-11-11 | 2014-11-11 | 61 | 18d | 0d | start no earlier than 2014-11-11 | Dmitriy Leonchik | 8h |
| 73 | 12.3 | Test CT, IR, and LCD Display |  | 4d | 2014-11-12 | 2014-11-17 | 72 | 18d |  | start no earlier than 2014-11-12 | Jose Aguliar; Mike Meza | 64h |
| 74 | 13 | **Enclosure Design and Build** |  | 3d | 2014-11-11 | 2014-11-13 |  | 20d |  |  |  | 24h |
| 75 | 13.1 | Design System Enclosure |  | 1d | 2014-11-11 | 2014-11-11 |  | 20d | 0d | start no earlier than 2014-11-11 | Rob Newcomb | 8h |
| 76 | 13.2 | Build System Enclosure |  | 2d | 2014-11-12 | 2014-11-13 | 75 | 20d |  | start no earlier than 2014-11-12 | Rob Newcomb | 16h |
| 77 | 13.3 | Team Meeting | milestone | 0d | 2014-11-13 | 2014-11-13 |  | 20d |  | finish no earlier than 2014-11-13 |  |  |
| 78 | 14 | **Board and component Testing** |  | 8d | 2014-11-17 | 2014-11-26 |  | 4d |  |  |  | 72h |
| 79 | 14.1 | Receive Board back from OSH Park | milestone | 0d | 2014-11-17 | 2014-11-17 |  | 18d |  | finish no earlier than 2014-11-17 |  |  |
| 80 | 14.2 | Solder Caps, Resistors, Power Supply, and Microcontroller onto Board |  | 1d | 2014-11-17 | 2014-11-17 | 58 | 4d | 0d | start no earlier than 2014-11-17 | Dmitriy Leonchik; Rob Newcomb | 16h |
| 81 | 14.3 | Team Meeting | milestone | 0d | 2014-11-18 | 2014-11-18 |  | 17d |  | finish no earlier than 2014-11-18 |  |  |
| 82 | 14.4 | Test board connections and pwr |  | 3d | 2014-11-18 | 2014-11-20 | 80 | 4d | 0d | start no earlier than 2014-11-18 | All Team Members | 24h |
| 83 | 14.5 | Test board inputs and outputs |  | 2d | 2014-11-21 | 2014-11-24 | 82 | 4d | 0d | start no earlier than 2014-11-20 | All Team Members | 16h |
| 84 | 14.6 | Team Meeting | milestone | 0d | 2014-11-20 | 2014-11-20 |  | 15d |  | finish no earlier than 2014-11-20 |  |  |
| 85 | 14.7 | Test board with IR Connected |  | 1d | 2014-11-25 | 2014-11-25 | 83 | 4d | 0d | start no earlier than 2014-11-25 | All Team Members | 8h |
| 86 | 14.8 | Team Meeting | milestone | 0d | 2014-11-25 | 2014-11-25 |  | 13d |  | start no earlier than 2014-11-25 |  |  |
| 87 | 14.9 | Test Board with CT connected |  | 1d | 2014-11-26 | 2014-11-26 | 85 | 4d | 0d | start no earlier than 2014-11-26 | All Team Members | 8h |

| ID | WBS | Task | Duration | Start | Finish | Predecessors | Total slack | Free slack | Constraint | Resources | Work |
| --- | --- | --- | --- | --- | --- | --- | --- | --- | --- | --- | --- |
| 88 | 15 | **Mounting and Final Testing** | 6d | 2014-11-27 | 2014-12-04 |  | 4d |  |  |  | 48h |
| 89 | 15.1 | Mount System in enclosure | 1d | 2014-11-27 | 2014-11-27 | 87 | 4d | 0d | start no earlier than 2014-11-27 | All Team Members | 8h |
| 90 | 15.2 | Test system while mounted in enclosure | 2d | 2014-11-28 | 2014-12-01 | 89 | 4d | 0d |  | All Team Members | 16h |
| 91 | 15.3 | Work out Bugs | 3d | 2014-12-02 | 2014-12-04 | 90 | 4d |  | start no earlier than 2014-12-01 | All Team Members | 24h |
| 92 | 16 | **Post Analysis and Extra Time** | 4d | 2014-12-05 | 2014-12-10 |  | 1d |  |  |  | 32h |
| 93 | 16.1 | Post Mordem Analysis | 1d | 2014-12-05 | 2014-12-05 |  | 4d |  | start no earlier than 2014-12-05 | All Team Members | 8h |
| 94 | 16.2 | Wiggle Room for errors and delays | 3d | 2014-12-08 | 2014-12-10 |  | 1d |  | start no earlier than 2014-12-08 | All Team Members | 24h |
| 95 | 17 | **Presentation** | 1d | 2014-12-11 | 2014-12-11 |  | 0d |  |  |  | 8h |
| 96 | 17.1 | Present Project | 1d | 2014-12-11 | 2014-12-11 | 91 | 0d |  | start no earlier than 2014-12-11 | All Team Members | 8h |
